# Gantt_LOG650_G20_Rune_110

Schedule from MS Project XML, 2026-01-12 to 2026-06-01, status date 2026-04-20, A marks actual dates.

## Calendars

- Standard: Mon-Fri 08:00-12:00, 13:00-17:00; Sat-Sun off.

## Schedule

| ID | WBS | Task | Type | Duration | Start | Finish | Predecessors | Complete | Remaining | Actual finish | Baseline start | Baseline finish | Baseline duration | Total slack | Free slack | Constraint |
| --- | --- | --- | --- | --- | --- | --- | --- | --- | --- | --- | --- | --- | --- | --- | --- | --- |
| 1 | 1 | **LOG650 G20 Rune — 110-sentraler: kapasitetsstyring og bemanningsdimensjonering** |  | 101d? | 2026-01-12 A | 2026-06-01 |  | 76% | 24.02d? |  | 2026-01-12 | 2026-05-28 | 99d? |  |  |  |
| 2 | 1.1 | **FASE 1 — Initiering** |  | 40d? | 2026-01-12 A | 2026-03-07 A |  | 100% |  |  | 2026-01-12 | 2026-03-07 | 40d? |  |  |  |
| 3 | 1.1.1 | L0 — Proposal: problemstilling, metode, datagrunnlag, WBS |  | 40d? | 2026-01-12 A | 2026-03-06 A |  | 100% |  |  | 2026-01-12 | 2026-03-07 | 40d? |  |  |  |
| 4 | 1.1.2 | M1 — Godkjent proposal | milestone | 0d? | 2026-03-07 A | 2026-03-07 A | 3 | 100% |  |  | 2026-03-07 | 2026-03-07 |  |  |  |  |
| 5 | 1.2 | **FASE 2 — Planlegging** |  | 4d? | 2026-03-07 A | 2026-03-12 A |  | 100% |  |  | 2026-03-07 | 2026-03-12 | 5d? |  |  |  |
| 6 | 1.2.1 | L1 — Avklart problemstilling, mal og avgrensninger | milestone | 0d? | 2026-03-07 A | 2026-03-07 A | 4 | 100% |  |  | 2026-03-07 | 2026-03-07 |  |  |  |  |
| 7 | 1.2.2 | L2 — Modellvalg: Erlang-C (M/M/c) identifisert og begrunnet | milestone | 0d? | 2026-03-07 A | 2026-03-07 A | 6 | 100% |  |  | 2026-03-07 | 2026-03-07 |  |  |  |  |
| 8 | 1.2.3 | L3 — Litteratursok: planlegging (sokestrategi, databaser, avgrensning) |  | 4d | 2026-03-09 A | 2026-03-12 A | 7 | 100% |  |  | 2026-03-09 | 2026-03-12 | 4d |  |  |  |
| 9 | 1.2.4 | L4 — Dataplan: datakilder, variabler, kvalitet, tilgangsstatus |  | 3d | 2026-03-09 A | 2026-03-11 A | 7 | 100% |  |  | 2026-03-09 | 2026-03-11 | 3d |  |  |  |
| 10 | 1.2.5 | L5 — Godkjent prosjektstyringsplan (dette dokumentet) |  | 3d | 2026-03-09 A | 2026-03-11 A | 7 | 100% |  |  | 2026-03-09 | 2026-03-11 | 3d |  |  |  |
| 11 | 1.2.6 | L6 — MS Project Gantt-diagram med referanseplan (baseline) |  | 1d | 2026-03-12 A | 2026-03-12 A | 10 | 100% |  |  | 2026-03-12 | 2026-03-12 | 1d |  |  |  |
| 12 | 1.2.7 | M2 — Godkjent prosjektplan + Gantt med referanseplan | milestone | 0d? | 2026-03-12 A | 2026-03-12 A | 11 | 100% |  |  | 2026-03-12 | 2026-03-12 |  |  |  |  |
| 13 | 1.3 | **FASE 3 — Gjennomforing** |  | 34d? | 2026-03-13 A | 2026-05-07 |  | 76% | 9.49d? |  | 2026-03-13 | 2026-05-07 | 40d? |  |  |  |
| 14 | 1.3.1 | L7 — Rapportskjelett + introduksjon og problemstilling v1 |  | 2d | 2026-03-13 A | 2026-03-16 A | 12 | 100% |  |  | 2026-03-13 | 2026-03-16 | 2d |  |  |  |
| 15 | 1.3.2 | L8 – Datainnhenting: LEO/BRIS-data 2020–2025, DSB-årsrapporter, SSB-befolkningsdata; datavalidering og rådatastruktur |  | 3d | 2026-03-13 A | 2026-03-17 A | 12 | 100% |  |  | 2026-03-13 | 2026-03-17 | 3d |  |  |  |
| 16 | 1.3.3 | L8b — ROS/beredskapsanalyse-gjennomgang: dokumentanalyse av dimensjoneringsgrunnlag |  | 3d | 2026-03-13 A | 2026-03-17 A | 12 | 100% |  |  | 2026-03-13 | 2026-03-17 | 3d |  |  |  |
| 17 | 1.3.4 | M3 — Rapportskjelett + intro v1 klar | milestone | 0d? | 2026-03-16 A | 2026-03-16 A | 14 | 100% |  |  | 2026-03-16 | 2026-03-16 |  |  |  |  |
| 18 | 1.3.5 | L8c – Eksplorativ dataanalyse (EDA): belastningsmonstre per skift og time, hendelsestypefordeling, Poisson-test på ankomstprosess |  | 5d | 2026-03-18 A | 2026-03-24 A | 15 | 100% |  |  | 2026-03-18 | 2026-03-24 | 5d |  |  |  |
| 19 | 1.3.6 | L9 — Parameterestimering: ankomstrate (lambda) og haandteringstid (mu) per skiftperiode |  | 3d | 2026-03-25 A | 2026-03-27 A | 18 | 100% |  |  | 2026-03-25 | 2026-03-27 | 3d |  |  |  |
| 20 | 1.3.7 | M4 — Data innhentet, validert og EDA ferdig | milestone | 0d? | 2026-03-24 A | 2026-03-24 A | 18 | 100% |  |  | 2026-03-24 | 2026-03-24 |  |  |  |  |
| 21 | 1.3.8 | L10 — Kapasitetsmodellering: Erlang-C grunnlinje + prosedyrbasert ankomstkonfliktmodell |  | 3d | 2026-03-30 A | 2026-04-01 A | 19 | 100% |  |  | 2026-03-30 | 2026-04-01 | 3d |  |  |  |
| 22 | 1.3.9 | L11 — Modellvalidering: bindingstidsanalyse fra BRIS, kapasitetsnivåklassifisering |  | 3d | 2026-04-02 A | 2026-04-06 A | 21 | 100% |  |  | 2026-04-02 | 2026-04-06 | 3d |  |  |  |
| 23 | 1.3.10 | L11b — Sensitivitets- og scenarioanalyse: +1 operatør, dimensjoneringskurve |  | 3d | 2026-04-07 A | 2026-04-09 A | 22 | 100% |  |  | 2026-04-07 | 2026-04-09 | 3d |  |  |  |
| 24 | 1.3.11 | L12 — Teorikapittel: kø-teori, Erlang-C, QED/square-root staffing, multiserver-jobs, op-binder-semantikk |  | 26d | 2026-03-13 A | 2026-04-19 | 12 | 58% | 11d |  | 2026-03-13 | 2026-04-02 | 15d | 10d | 0d | finish no earlier than 2026-04-19 |
| 25 | 1.3.12 | M5 — Kapasitetsmodell implementert og validert | milestone | 0d? | 2026-04-09 A | 2026-04-09 A | 23 | 100% |  |  | 2026-04-09 | 2026-04-09 |  |  |  |  |
| 26 | 1.3.13 | L13 — Benchmarking: modellanbefaling vs. faktisk bemanning, alle 12 norske 110-sentraler |  | 5d? | 2026-04-10 A | 2026-04-16 A | 23 | 100% |  |  | 2026-04-10 | 2026-04-16 | 5d? |  |  |  |
| 27 | 1.3.14 | L14 — Generaliseringsanalyse: hendelsesvolum, innbyggertall og areal som prediktorer |  | 5d | 2026-04-17 A | 2026-04-23 | 26 | 90% | 0.5d |  | 2026-04-17 | 2026-04-23 | 5d | 27d |  |  |
| 28 | 1.3.15 | L15 — Resultater og diskusjon: rapportutkast inkl. operative saertrekk og modellbegrensninger |  | 5d? | 2026-04-04 A | 2026-04-10 A | 27 | 100% |  |  | 2026-04-24 | 2026-04-30 | 5d? |  |  | finish no earlier than 2026-04-19 |
| 29 | 1.3.16 | L15a — Skrive kap 1 Innledning | manual | 1d | 2026-04-07 A | 2026-04-07 |  | 100% |  | 2026-04-19 |  |  |  |  |  |  |
| 30 | 1.3.17 | L15b — Skrive kap 3 Teori | manual | 1d | 2026-04-07 A | 2026-04-07 |  | 100% |  | 2026-04-19 |  |  |  |  |  |  |
| 31 | 1.3.18 | L15c — Skrive kap 8 Diskusjon | manual | 4d | 2026-04-14 A | 2026-04-17 |  | 100% |  | 2026-04-19 |  |  |  |  |  |  |
| 32 | 1.3.19 | L15d — Skrive kap 9 Konklusjon | manual | 1d | 2026-04-19 A | 2026-04-20 A |  | 100% |  |  |  |  |  |  |  |  |
| 33 | 1.3.20 | L15e — Sammenstille rapportutkast (sammendrag, vedlegg, skjelett-synk, referanseliste) | manual | 5d | 2026-04-20 A | 2026-04-29 |  | 30% | 3.5d |  |  |  |  |  |  |  |
| 34 | 1.3.21 | L8d — Nasjonal DSB 2025-oversikt (508 228 oppdrag, alle 12 sentraler) |  | 4d | 2026-04-15 A | 2026-04-20 A | 18 | 100% |  |  |  |  |  |  |  |  |
| 35 | 1.3.22 | L8e — Spørreskjemaer 110-sentraler (intern kalibrering) |  | 13d | 2026-04-10 A | 2026-04-28 | 15 | 69% | 4d |  |  |  |  | 24d |  |  |
| 36 | 1.3.23 | L8f — DSB-ønskeliste BRIS-datauttrekk (22 datapunkter) |  | 2d | 2026-04-17 A | 2026-04-20 A | 15 | 100% |  |  |  |  |  |  |  |  |
| 37 | 1.3.24 | L11c — V3-regelutvidelse: L-aba krever Kilde=Alarm |  | 2d | 2026-04-18 A | 2026-04-21 A | 22 | 100% |  |  |  |  |  |  |  |  |
| 38 | 1.3.25 | L11d — V3 op-binder-semantikk + D-pri1/D-aba-splitt (2 ops vs serial) |  | 2d | 2026-04-18 A | 2026-04-21 A | 37 | 100% |  |  |  |  |  |  |  |  |
| 39 | 1.3.26 | L13b — LABA Sør-Vest dybdeanalyse n=50 (utfylt) |  | 3d | 2026-04-17 A | 2026-04-21 A | 26 | 100% |  |  |  |  |  |  |  |  |
| 40 | 1.3.27 | L13c — LABA Sør-Vest dybdeanalyse n=100 (sendt 20.04, venter) |  | 6d | 2026-04-20 A | 2026-04-27 | 39 | 33% | 4d |  |  |  |  | 25d |  |  |
| 41 | 1.3.28 | L14b — Nasjonal 2025-analyse per sentral |  | 3d | 2026-04-16 A | 2026-04-20 A | 27 | 100% |  |  |  |  |  |  |  |  |
| 42 | 1.3.29 | L16 — Godkjent hoved-utkast + peer review (skriftlig tilbakemelding til annen gruppe) |  | 5d | 2026-04-20 | 2026-04-24 | 28, 24 |  |  |  | 2026-05-01 | 2026-05-07 | 5d | 10d | 0d |  |
| 43 | 1.3.30 | M6 — Godkjent hoved-utkast + peer review gjennomfart | milestone | 0d? | 2026-04-24 | 2026-04-24 | 42 |  |  |  | 2026-05-07 | 2026-05-07 |  | 10d | 9d |  |

Notes:
- 3: Innlevert 7. mars 2026. Avventer formell godkjenning.
- 4: Frist: 15. mars 2026. Krav: C-niva.
- 6: Fullfort 7. mars 2026.
- 7: Fullfort 7. mars 2026.
- 8: Litteraturliste Excel opprettet 8. mars 2026.
- 9: Dataplan inkludert i prosjektstyringsplan seksjon 3.7.
- 10: Plan v1.4 — 467 linjer. Inkluderer WBS, risiko, dataplan, Gantt-oversikt.
- 11: XML-fil generert 8. mars 2026. Importer i MS Project og sett baseline.
- 12: Frist: 15. mars 2026. Krav: C-niva.
- 14: Uke 12 (16.-22. mars). Mal fra HiMolde.
- 15: Uke 12. Datainnhenting og validering av rådata.
- 16: Uke 12-13. Kritisk gjennomgang: dimensjonerende hendelser, forutsetninger, sammenligning med LEO/BRIS.
- 17: Frist: 22. mars 2026. Intern milepael.
- 18: Uke 12-13. Kritisk sti. EDA, Poisson-test, toppbelastning, samtidige hendelser.
- 19: Uke 13. Avhenger av L8c (EDA). Python: scipy, pandas.
- 20: Frist: 29. mars 2026. Intern milepael.
- 21: Uke 14. c_effektiv = c_total - 1. Python-implementasjon.
- 22: Uke 14-15. Poisson goodness-of-fit, ring-flom som sensitivitetscase.
- 23: Uke 15. Ring-flom som ekstremscenario. Avhenger av L11.
- 24: Uke 12-16. Skrevet samlet med kap 3 19.04. 153 linjer. Utvidet omfang: kø-teori, Erlang-C, QED/square-root staffing, multiserver-jobs, op-binder-semantikk. APA 7th norsk.
- 25: Frist: 10. april 2026. Intern milepael.
- 26: Uke 15. DSB-aarsrapporter. Standardisert mot per-innbygger og per-hendelse.
- 27: Uke 15-16. Nasjonal dimensjoneringsmodell-ambisjon. Omfang tilpasses tilgjengelige data.
- 28: Uke 16. Beredskapsperspektiv: lav utnyttelse ≠ overbemanning.
- 34: Status.md-ref: L8d. Nasjonal DSB 2025-oversikt — 508 228 oppdrag totalt, alle 12 sentraler.
- 35: Status.md-ref: L17. Spørreskjema sendt til intern kalibrering — utsendelse til 11 andre sentraler etter LABA n=100 er tilbake.
- 36: Status.md-ref: L18. DSB-ønskeliste med 22 spesifikke BRIS-datapunkter.
- 37: Status.md-ref: L19. V3-regelutvidelse — L-aba-klassifisering krever Kilde=Alarm.
- 38: Status.md-ref: L20. V3 op-binder-semantikk — D-pri1 (2 ops) vs D-aba (serial).
- 39: LABA Sør-Vest n=50 utfylt. Første dybdeanalyse før n=100-runde.
- 40: LABA n=100 sendt 20.04 — venter på utfylling og retur.
- 41: Nasjonal 2025-analyse — per sentral (alle 12 norske 110-sentraler).
- 42: Uke 17-18 (20. april - 3. mai). Obligatorisk del av arbeidskrav M6.
- 43: Frist: slutten av april 2026. Krav: C-niva.

| ID | WBS | Task | Type | Duration | Start | Finish | Predecessors | Baseline start | Baseline finish | Baseline duration | Total slack | Free slack | Constraint |
| --- | --- | --- | --- | --- | --- | --- | --- | --- | --- | --- | --- | --- | --- |
| 44 | 1.4 | **FASE 4 — Avslutning** |  | 17d? | 2026-05-08 | 2026-06-01 |  | 2026-05-08 | 2026-05-21 | 10d? |  |  |  |
| 45 | 1.4.1 | L17 — Ferdigstilt rapport inkl. kode pa GitHub |  | 15d | 2026-05-08 | 2026-05-28 | 43 | 2026-05-08 | 2026-05-28 | 15d | 1d | 0d |  |
| 46 | 1.4.2 | M7 — Ferdigstilt rapport innlevert | milestone | 0d? | 2026-05-28 | 2026-05-28 | 45 | 2026-05-28 | 2026-05-28 |  | 1d |  |  |
| 47 | 1.4.3 | L18 — Muntlig eksamen |  | 1d | 2026-06-01 | 2026-06-01 | 46 | 2026-05-28 | 2026-05-28 |  | 0d |  | start no earlier than 2026-06-01 |

Notes:
- 45: Uke 19-22 (4. - 31. mai). Sluttlakkering, vedlegg, kode-repo.
- 46: Frist: 31. mai 2026. Krav: B-niva. Rapport + kode pa GitHub.
- 47: Tidlig juni 2026. Krav: B-niva.
